# 井関農機向け小型乾燥機コントローラ

Schedule from GanttProject, 2015-03-30 to 2015-07-31.
リライアンスシステム
Holidays every year on 01-01, 02-11, 04-29, 04-30, 05-03, 05-04, 05-05, 09-23, 11-03, 11-23, 12-23, 12-31

## Calendars

- Project calendar: Mon-Fri working; Sat-Sun off.

## Resources

| Resource |
| --- |
| 坂本 |
| 山下 |
| 山本 |
| 五百木 |
| 基板作成業者 |

## Schedule

| ID | WBS | Task | Type | Duration | Start | Finish | Predecessors | Resources |
| --- | --- | --- | --- | --- | --- | --- | --- | --- |
| 1 | 1 | **小型乾燥機コントローラ開発** |  | 71d | 2015-03-30 | 2015-07-10 |  |  |
| 2 | 1.1 | **ハードウェア設計開発** |  | 69d | 2015-03-30 | 2015-07-08 |  |  |
| 3 | 1.1.1 | 概略設計 |  | 10d | 2015-03-30 | 2015-04-10 |  | 山下 |
| 4 | 1.1.2 | 回路図作成 |  | 20d | 2015-04-13 | 2015-05-14 | 3 | 山下 |
| 5 | 1.1.3 | 試作品作成＆動作確認 |  | 20d | 2015-04-13 | 2015-05-14 | 3 | 坂本 |
| 6 | 1.1.4 | PCB設計 |  | 25d | 2015-04-14 | 2015-05-22 |  | 山下 |
| 7 | 1.1.5 | 基板作成 |  | 6d | 2015-05-25 | 2015-06-01 | 4, 5, 6 | 基板作成業者 |
| 8 | 1.1.6 | 製品組み立て＆テスト |  | 10d | 2015-06-02 | 2015-06-15 | 7 | 坂本 |
| 9 | 1.1.7 | PCB問題点発見 | milestone | 0d | 2015-06-16 | 2015-06-16 | 8 | 山下 |
| 10 | 1.1.8 | PCB修正 |  | 2d | 2015-06-16 | 2015-06-17 | 9 | 山下 |
| 11 | 1.1.9 | 基板作成(その２) |  | 10d | 2015-06-18 | 2015-07-01 | 10 | 基板作成業者 |
| 12 | 1.1.10 | 製品組み立て＆テスト(その２) |  | 5d | 2015-07-02 | 2015-07-08 | 11 | 坂本 |
| 13 | 1.2 | **システム設計** |  | 71d | 2015-03-30 | 2015-07-10 |  |  |
| 14 | 1.2.1 | システム仕様書作成 |  | 50d | 2015-03-30 | 2015-06-11 |  | 山下 |
| 15 | 1.2.2 | ファームウェア設計 |  | 35d | 2015-04-08 | 2015-06-01 |  | 山本 |
| 16 | 1.2.3 | シミュレータソフト設計 |  | 20d | 2015-05-01 | 2015-06-01 |  | 山本 |
| 17 | 1.2.4 | システムテスト仕様書作成 |  | 7d | 2015-05-22 | 2015-06-01 |  | 山下 |
| 18 | 1.2.5 | 試作機システムテスト開始 | milestone | 0d | 2015-06-01 | 2015-06-01 |  | 山下 |
| 19 | 1.2.6 | 試作機システムテスト |  | 5d | 2015-06-02 | 2015-06-08 | 15, 16, 17, 18 | 五百木 |
| 20 | 1.2.7 | 製品版システムテスト開始 | milestone | 0d | 2015-06-22 | 2015-06-22 |  | 山下 |
| 21 | 1.2.8 | 客先にてシミュレータ接続試験 |  | 5d | 2015-06-22 | 2015-06-26 | 20 | 坂本 |
| 22 | 1.2.9 | 製品版システムテスト |  | 5d | 2015-06-22 | 2015-06-26 | 8, 19, 20 | 五百木 |
| 23 | 1.2.10 | 最終テスト |  | 2d | 2015-07-09 | 2015-07-10 | 12, 22 | 五百木 |
| 24 | 2 | 顧客へ納品 | milestone | 0d | 2015-07-31 | 2015-07-31 |  |  |

Notes:
- 7: 基板作成は、インターネットから作成依頼する予定、以下、所要日数と価格 / unicraft：12営業日、\21,775- / P版.com：5営業日、\33,706- / ※ここでは、unicraftを基準に日程を作成。
- 12: 顧客に納品するための製品の最終組み立てを行います。
- 14: ファイル名： / 【2015-08-20】顧客向け小型乾燥機コントローラ仕様書.doc / この仕様書は、顧客向けの提出資料です。
- 17: ファイル名： / 【2015-xx-xx】小型乾燥機コントローラ_テスト仕様書.xls / この資料に基づいてシステムのテストを実施します。
- 21: 顧客のシミュレータを接続して試験を行います。
